# PROYECTO BODEGA INDUSTRIAL

Schedule from Primavera P6, 2026-09-07 to 2027-03-03, data date 2026-09-07, A marks actual dates.

## Calendars

- 5d Semana Laboral 40hrs MyS: Mon-Thu 08:00-13:00, 14:00-18:00; Fri 08:00-13:00; Sat-Sun off.

## Resources

| Resource | Group |
| --- | --- |
| RECURSOS JVV | labor |

## Schedule

| ID | WBS | Activity | Type | Duration | Start | Finish | Predecessors | Complete | Remaining | Total float | Free float | Resources |
| --- | --- | --- | --- | --- | --- | --- | --- | --- | --- | --- | --- | --- |
|  | 0 | **HITOS DEL SERVICIO** |  |  | 2026-09-07 | 2027-03-03 |  |  |  |  |  |  |
| G01 |  | Inicio Gestión (LOE) | milestone | 0d | 2026-09-07 | 2026-09-07 | H00 SF |  |  | 1d | 0d |  |
| H00 |  | Inicio del Proyecto / Entrega de terreno (Contractual) | milestone | 0d | 2026-09-07 | 2026-09-07 |  |  |  | 0d |  |  |
| H02 |  | Permiso DOM otorgado (Contractual) | milestone | 0d | 2026-10-02 | 2026-10-02 | F118 FF |  |  | 111d | 1d |  |
| H03 |  | Acta de inicio firmada / Kick-off | milestone | 0d | 2026-10-05 | 2026-10-05 | F124 FF, H02 FF |  |  | 110d | 1d |  |
| H04 |  | Instalación de faenas terminada | milestone | 0d | 2026-10-06 | 2026-10-06 | H03 FF, F202 FF |  |  | 109d | 27d |  |
| H01 |  | Ingeniería de detalle aprobada | milestone | 0d | 2026-11-11 | 2026-11-11 | F113 FF, F105 FF, F122 FF, F123 FF, H04 FF |  |  | 82d | 12d |  |
| H05 |  | Fundaciones terminadas (Contractual) | milestone | 0d | 2026-11-27 | 2026-11-27 | F218 FF, H01 FF |  |  | 70d | 22d |  |
| H06 |  | Radier terminado | milestone | 0d | 2026-12-28 | 2026-12-28 | H05 FF, F230 FF, F233 FF, F234 FF, F243 FF |  |  | 48d | 0d |  |
| H07 |  | Estructura metálica montada (Contractual) | milestone | 0d | 2026-12-28 | 2026-12-28 | H06 FF, F320 FF, F321 FF, F322 FF |  |  | 48d | 7d |  |
| H08 |  | Cubierta y cerramientos cerrados | milestone | 0d | 2027-01-06 | 2027-01-06 | F334 FF, F327 FF, F328 FF, F332 FF, H07 FF |  |  | 41d | 5d |  |
| H09 |  | Pruebas hidráulicas CI OK | milestone | 0d | 2027-01-13 | 2027-01-13 | H08 FF, F439 FF, F431 FF, F432 FF, F433 FF |  |  | 36d | 2d |  |
| H10 |  | Instalaciones EE energizadas | milestone | 0d | 2027-01-15 | 2027-01-15 | F417 FF, F410 FF, F411 FF, F415 FF, H09 FF |  |  | 34d | 12d |  |
| H11 |  | Comisionamiento finalizado | milestone | 0d | 2027-02-02 | 2027-02-02 | H10 FF, F449 FF, F419 FF, F443 FF, F445 FF |  |  | 22d | 18d |  |
| H12 |  | Recepción DOM (Contractual) | milestone | 0d | 2027-02-25 | 2027-02-25 | F607 FF, H11 FF |  |  | 4d | 3d |  |
| G02 |  | Fin Gestión (LOE) | milestone | 0d | 2027-03-02 | 2027-03-02 | F600 FF, F601 FF, F602 FF, F603 FF, F604 FF |  |  | 1d |  |  |
| H13 |  | Dossier técnico entregado | milestone | 0d | 2027-03-02 | 2027-03-02 | H12 FF, F608 FF |  |  | 1d |  |  |
| H14 |  | Entrega final del proyecto (Contractual) | milestone | 0d | 2027-03-03 | 2027-03-03 | F609 FF, F605 FF, F606 FF, G02 FF, H13 FF |  |  | 0d |  |  |
|  | 1 | **FASE 1: INGENIERÍA Y PERMISOS** |  |  | 2026-09-07 | 2026-11-11 |  |  |  |  |  |  |
|  | 1 | **Estudios de Terreno** |  |  | 2026-09-07 | 2026-09-16 |  |  |  |  |  |  |
| F100 |  | Levantamiento topográfico del terreno |  | 3d | 2026-09-07 A | 2026-09-09 A | H00 SS | 100% |  |  |  | RECURSOS JVV [200 h] |
| F101 |  | Estudio de mecánica de suelos (EMS) |  | 5d | 2026-09-09 A | 2026-09-16 | F100 |  | 5d | 6d | 2d | RECURSOS JVV [40 h] |
|  | 2 | **Arquitectura** |  |  | 2026-09-09 | 2026-09-18 |  |  |  |  |  |  |
| F102 |  | Planos de arquitectura (plantas, cortes) |  | 7d | 2026-09-09 A | 2026-09-18 | F100 |  | 7d | 0d |  | RECURSOS JVV [96 h] |

| ID | WBS | Activity | Duration | Start | Finish | Predecessors | Total float | Free float | Resources |
| --- | --- | --- | --- | --- | --- | --- | --- | --- | --- |
|  | 3 | **Ingeniería Estructural** |  | 2026-09-18 | 2026-10-14 |  |  |  |  |
| F103 |  | Ingeniería básica estructural | 7d | 2026-09-18 | 2026-09-29 | F102, F101 | 4d | 0d | RECURSOS JVV [40 h] |
| F104 |  | Cálculo estructural galpón metálico | 6d | 2026-09-29 | 2026-10-07 | F103 | 4d | 0d | RECURSOS JVV [50 h] |
| F105 |  | Memoria de cálculo fundaciones | 8d | 2026-09-29 | 2026-10-08 | F103, F101 | 106d | 24d | RECURSOS JVV [20 h] |
| F106 |  | Planos de estructuras metálicas | 6d | 2026-10-07 | 2026-10-14 | F104 | 4d | 0d | RECURSOS JVV [54 h] |
|  | 4 | **Ingeniería Eléctrica** |  | 2026-09-18 | 2026-09-29 |  |  |  |  |
| F107 |  | Planos de instalaciones eléctricas | 7d | 2026-09-18 | 2026-09-29 | F102 | 56d | 0d | RECURSOS JVV [32 h] |
|  | 5 | **Ingeniería Sanitaria** |  | 2026-09-18 | 2026-09-25 |  |  |  |  |
| F108 |  | Planos instalaciones sanitarias | 5d | 2026-09-18 | 2026-09-25 | F102 | 58d | 0d | RECURSOS JVV [16 h] |
|  | 6 | **Protección Contra Incendios** |  | 2026-09-18 | 2026-09-29 |  |  |  |  |
| F109 |  | Planos sistema contra incendio | 7d | 2026-09-18 | 2026-09-29 | F102 | 110d | 28d | RECURSOS JVV [24 h] |
|  | 7 | **Especificaciones Técnicas** |  | 2026-09-25 | 2026-10-19 |  |  |  |  |
| F110 |  | Especificaciones técnicas generales | 8d | 2026-09-25 | 2026-10-07 | F108 | 90d | 8d | RECURSOS JVV [30 h] |
| F112 |  | Especificaciones técnicas EESS | 8d | 2026-09-29 | 2026-10-08 | F107, F108 | 88d | 6d | RECURSOS JVV [25 h] |
| F111 |  | Especificaciones técnicas estructurales | 8d | 2026-10-07 | 2026-10-19 | F104 | 82d | 0d | RECURSOS JVV [35 h] |
|  | 8 | **Presupuesto y Programación** |  | 2026-10-19 | 2026-11-05 |  |  |  |  |
| F113 |  | Presupuesto oficial APU por partida | 7d | 2026-10-19 | 2026-10-27 | F110, F111, F112, F116, F117 | 82d | 0d | RECURSOS JVV [60 h] |
| F114 |  | Programa oficial del proyecto (P6) | 7d | 2026-10-27 | 2026-11-05 | F113 | 82d | 0d | RECURSOS JVV [45 h] |
|  | 9 | **Permisos y Tramitaciones** |  | 2026-09-18 | 2026-10-08 |  |  |  |  |
| F115 |  | Solicitud permiso de edificación DOM | 5d | 2026-09-18 | 2026-09-25 | F102 | 0d |  | RECURSOS JVV [16 h] |
| F117 |  | Revisión planos SERNAGEOMIN | 8d | 2026-09-25 | 2026-10-07 | F108 | 90d | 8d | RECURSOS JVV [16 h] |
| F118 |  | Aprobación permiso de edificación | 5d | 2026-09-25 | 2026-10-02 | F115 | 0d |  | RECURSOS JVV [8 h] |
| F116 |  | Tramitación revisión SEC instalaciones EE | 8d | 2026-09-29 | 2026-10-08 | F107 | 88d | 6d | RECURSOS JVV [20 h] |
|  | 10 | **Planes de Gestión** |  | 2026-10-02 | 2026-11-11 |  |  |  |  |
| F124 |  | Acta de inicio de obra (kick-off) | 1d | 2026-10-02 | 2026-10-05 | F118 | 0d |  | RECURSOS JVV [8 h] |
| F122 |  | Protocolo de ensayos de materiales | 5d | 2026-10-19 | 2026-10-26 | F111 | 95d | 13d | RECURSOS JVV [12 h] |
| F119 |  | Plan de aseguramiento de calidad (PAC) | 7d | 2026-10-27 | 2026-11-05 | F113 | 82d | 0d | RECURSOS JVV [24 h] |
| F120 |  | Plan de gestión ambiental | 7d | 2026-10-27 | 2026-11-05 | F113 | 82d | 0d | RECURSOS JVV [20 h] |
| F121 |  | Plan de gestión de seguridad (PGS) | 7d | 2026-10-27 | 2026-11-05 | F113 | 82d | 0d | RECURSOS JVV [20 h] |
| F123 |  | Informe de línea base del proyecto | 4d | 2026-11-05 | 2026-11-11 | F114, F119, F120, F121, F109 | 82d | 0d | RECURSOS JVV [16 h] |

| ID | WBS | Activity | Duration | Start | Finish | Predecessors | Total float | Free float | Resources |
| --- | --- | --- | --- | --- | --- | --- | --- | --- | --- |
|  | 2 | **FASE 2: OBRAS CIVILES — FUNDACIONES Y LOSA** |  | 2026-10-05 | 2027-02-02 |  |  |  |  |
|  | 1 | **Instalación de Faenas** |  | 2026-10-05 | 2026-10-08 |  |  |  |  |
| F200 |  | Instalación de faenas (bodega, casino, SSHH) | 4d | 2026-10-05 | 2026-10-08 | F124 | 0d |  | RECURSOS JVV [120 h] |
| F201 |  | Cierre perimetral provisional de obra | 3d | 2026-10-05 | 2026-10-08 | F124 | 1d |  | RECURSOS JVV [54 h] |
| F202 |  | Cartel de obra | 1d | 2026-10-05 | 2026-10-06 | F124 | 109d | 0d | RECURSOS JVV [10 h] |
|  | 2 | **Movimiento de Tierras** |  | 2026-10-09 | 2026-10-30 |  |  |  |  |
| F203 |  | Desbroce y limpieza del terreno | 3d | 2026-10-09 | 2026-10-14 | F200, F201 | 0d |  | RECURSOS JVV [110 h] |
| F204 |  | Topografía y trazado ejes de fundaciones | 1d | 2026-10-14 | 2026-10-14 | F203, F100 | 0d |  | RECURSOS JVV [20 h] |
| F205 |  | Excavación mecánica para fundaciones | 4d | 2026-10-15 | 2026-10-20 | F204 | 0d |  | RECURSOS JVV [55 h] |
| F206 |  | Excavación manual para correcciones | 4d | 2026-10-21 | 2026-10-26 | F205 | 0d |  | RECURSOS JVV [120 h] |
| F207 |  | Retiro de excedentes de excavación | 4d | 2026-10-21 | 2026-10-26 | F205 | 15d | 0d | RECURSOS JVV [32 h] |
| F208 |  | Relleno y compactación con material seleccionado | 4d | 2026-10-27 | 2026-10-30 | F206, F207 | 15d | 0d | RECURSOS JVV [180 h] |
|  | 3 | **Fundaciones** |  | 2026-10-27 | 2026-11-19 |  |  |  |  |
| F209 |  | Hormigón de limpieza H-10 e=5cm | 3d | 2026-10-27 | 2026-10-29 | F206 | 0d |  | RECURSOS JVV [98 h] |
| F210 |  | Enfierradura zapatas (kg) | 4d | 2026-10-29 | 2026-11-04 | F209 | 0d |  | RECURSOS JVV [680 h] |
| F211 |  | Moldaje zapatas aisladas | 4d | 2026-10-29 | 2026-11-04 | F209 | 0d |  | RECURSOS JVV [450 h] |
| F212 |  | Hormigón H-30 zapatas aisladas | 3d | 2026-11-04 | 2026-11-09 | F210, F211 | 0d |  | RECURSOS JVV [380 h] |
| F216 |  | Pernos de anclaje columnas (set) | 4d | 2026-11-04 | 2026-11-10 | F210, F211 | 7d |  | RECURSOS JVV [96 h] |
| F213 |  | Enfierradura cadena de fundación | 4d | 2026-11-09 | 2026-11-13 | F212 | 1d |  | RECURSOS JVV [256 h] |
| F214 |  | Moldaje cadena de fundación | 5d | 2026-11-09 | 2026-11-16 | F212 | 0d |  | RECURSOS JVV [800 h] |
| F215 |  | Hormigón H-30 cadena de fundación | 3d | 2026-11-16 | 2026-11-19 | F213, F214 | 0d |  | RECURSOS JVV [192 h] |
|  | 4 | **Anclajes y Placas Base** |  | 2026-11-19 | 2026-11-27 |  |  |  |  |
| F217 |  | Nivelación y alineación placas base | 3d | 2026-11-19 | 2026-11-24 | F215, F216 | 0d |  | RECURSOS JVV [72 h] |
| F218 |  | Grouting placas base columnas | 3d | 2026-11-24 | 2026-11-27 | F217 | 0d |  | RECURSOS JVV [72 h] |

| ID | WBS | Activity | Duration | Start | Finish | Predecessors | Total float | Free float | Resources |
| --- | --- | --- | --- | --- | --- | --- | --- | --- | --- |
|  | 5 | **Radier y Losa** |  | 2026-11-19 | 2026-12-28 |  |  |  |  |
| F219 |  | Relleno interior con ripio compactado e=20cm | 4d | 2026-11-19 | 2026-11-25 | F215, F235 | 5d | 0d | RECURSOS JVV [384 h] |
| F220 |  | Compactación de subrasante (95% Proctor) | 4d | 2026-11-25 | 2026-12-01 | F219 | 5d | 0d | RECURSOS JVV [100 h] |
| F221 |  | Sub-base granular e=15cm compactada | 4d | 2026-12-01 | 2026-12-07 | F220 | 5d | 0d | RECURSOS JVV [180 h] |
| F222 |  | Enfierradura losa malla ø8@20cm | 4d | 2026-12-07 | 2026-12-10 | F221 | 5d | 0d | RECURSOS JVV [720 h] |
| F223 |  | Moldaje perimetral losa | 3d | 2026-12-07 | 2026-12-09 | F221 | 6d | 1d | RECURSOS JVV [180 h] |
| F224 |  | Instalación tuberías embutidas EESS antes de losa | 3d | 2026-12-07 | 2026-12-09 | F221, F108 | 6d | 1d | RECURSOS JVV [40 h] |
| F225 |  | Instalación ductos eléctricos embutidos | 3d | 2026-12-07 | 2026-12-09 | F221, F107 | 6d | 1d | RECURSOS JVV [105 h] |
| F226 |  | Hormigón H-30 losa e=15cm | 3d | 2026-12-10 | 2026-12-15 | F222, F223, F224, F225 | 5d | 0d | RECURSOS JVV [1050 h] |
| F227 |  | Endurecedor superficial minerálico | 3d | 2026-12-16 | 2026-12-21 | F226 | 14d | 0d | RECURSOS JVV [200 h] |
| F228 |  | Curado de losa con membrana | 3d | 2026-12-16 | 2026-12-21 | F226 | 14d | 0d | RECURSOS JVV [100 h] |
| F229 |  | Corte de juntas de dilatación | 3d | 2026-12-21 | 2026-12-23 | F227, F228 | 14d | 0d | RECURSOS JVV [36 h] |
| F230 |  | Sellado de juntas con poliuretano | 3d | 2026-12-23 | 2026-12-28 | F229, F237, F238 | 14d | 0d | RECURSOS JVV [45 h] |
|  | 6 | **Pavimentos y Obras Exteriores** |  | 2026-11-19 | 2026-12-15 |  |  |  |  |
| F234 |  | Hormigón cierre perimetral inferior (soleo) | 4d | 2026-11-19 | 2026-11-25 | F215 | 72d | 24d | RECURSOS JVV [270 h] |
| F231 |  | Pavimento exterior acceso hormigón H-25 e=12cm | 5d | 2026-11-27 | 2026-12-03 | F218 | 41d | 0d | RECURSOS JVV [400 h] |
| F232 |  | Bordillo hormigón prefabricado | 4d | 2026-12-04 | 2026-12-09 | F231 | 57d | 0d | RECURSOS JVV [64 h] |
| F233 |  | Veredas peatonales H-25 | 4d | 2026-12-10 | 2026-12-15 | F232, F235 | 57d | 9d | RECURSOS JVV [120 h] |
|  | 7 | **Obras de Drenaje** |  | 2026-11-02 | 2027-01-12 |  |  |  |  |
| F235 |  | Foso de inspección instalaciones | 4d | 2026-11-02 | 2026-11-05 | F208 | 15d | 10d | RECURSOS JVV [48 h] |
| F236 |  | Cámara de inspección aguas lluvia | 4d | 2026-11-02 | 2026-11-05 | F208 | 45d | 0d | RECURSOS JVV [48 h] |
| F237 |  | Canaleta aguas lluvia perimetral | 4d | 2026-11-05 | 2026-11-11 | F236 | 45d | 31d | RECURSOS JVV [80 h] |
| F238 |  | Red de alcantarillado pluvial enterrada | 4d | 2026-11-05 | 2026-11-11 | F236 | 45d | 31d | RECURSOS JVV [80 h] |
| F239 |  | Colector de agua lluvia (bajadas techo) | 4d | 2027-01-06 | 2027-01-12 | F326 | 36d |  | RECURSOS JVV [24 h] |

| ID | WBS | Activity | Duration | Start | Finish | Predecessors | Total float | Free float | Resources |
| --- | --- | --- | --- | --- | --- | --- | --- | --- | --- |
|  | 8 | **Terminaciones de Piso** |  | 2027-01-15 | 2027-01-28 |  |  |  |  |
| F240 |  | Pintura suelo epóxico 2 manos demarcación | 5d | 2027-01-15 | 2027-01-22 | F339, F230 | 0d |  | RECURSOS JVV [400 h] |
| F241 |  | Demarcación zonas de tránsito y almacén | 4d | 2027-01-22 | 2027-01-28 | F240 | 0d |  | RECURSOS JVV [60 h] |
|  | 9 | **Ensayos y Control de Calidad** |  | 2026-12-07 | 2027-02-02 |  |  |  |  |
| F243 |  | Ensayo compactación Proctor modificado | 4d | 2026-12-07 | 2026-12-10 | F220, F221 | 60d | 12d | RECURSOS JVV [16 h] |
| F242 |  | Ensayo compresión hormigón (serie 3 probetas) | 32d | 2026-12-21 | 2027-02-02 | F212, F215, F227 | 21d |  | RECURSOS JVV [30 h] |
|  | 3 | **FASE 3: ESTRUCTURA METÁLICA Y CUBIERTA** |  | 2026-10-15 | 2027-01-15 |  |  |  |  |
|  | 1 | **Fabricación Estructura Metálica** |  | 2026-10-15 | 2026-11-13 |  |  |  |  |
| F300 |  | Fabricación columnas perfil HEB 260 | 11d | 2026-10-15 | 2026-10-29 | F106 | 4d | 0d | RECURSOS JVV [768 h] |
| F301 |  | Fabricación vigas principales reticuladas | 11d | 2026-10-15 | 2026-10-29 | F106 | 4d | 0d | RECURSOS JVV [960 h] |
| F302 |  | Fabricación vigas secundarias IPE 240 | 11d | 2026-10-15 | 2026-10-29 | F106 | 4d | 0d | RECURSOS JVV [720 h] |
| F303 |  | Fabricación viguetas de cubierta | 11d | 2026-10-15 | 2026-10-29 | F106 | 4d | 0d | RECURSOS JVV [720 h] |
| F305 |  | Fabricación tirantes y cruces de San Andrés | 9d | 2026-10-15 | 2026-10-27 | F106 | 6d | 0d | RECURSOS JVV [250 h] |
| F304 |  | Fabricación correas de techo C200 | 11d | 2026-10-29 | 2026-11-13 | F300 | 27d |  | RECURSOS JVV [400 h] |
|  | 2 | **Fabricación Portones y Accesos** |  | 2026-10-27 | 2026-11-11 |  |  |  |  |
| F306 |  | Fabricación portones ingreso 5x6m | 11d | 2026-10-27 | 2026-11-11 | F305 | 78d | 17d | RECURSOS JVV [240 h] |
| F307 |  | Fabricación portón salida emergencia 3x4m | 11d | 2026-10-27 | 2026-11-11 | F305 | 78d | 17d | RECURSOS JVV [160 h] |
|  | 3 | **Fabricación Plataformas y Escaleras** |  | 2026-10-27 | 2026-11-09 |  |  |  |  |
| F308 |  | Fabricación plataformas de acceso acero | 9d | 2026-10-27 | 2026-11-09 | F305 | 39d | 27d | RECURSOS JVV [320 h] |
| F309 |  | Fabricación escaleras metálicas interiores | 9d | 2026-10-27 | 2026-11-09 | F305 | 39d | 27d | RECURSOS JVV [80 h] |
|  | 4 | **Tratamiento Anticorrosivo y Pintura** |  | 2026-10-29 | 2026-11-18 |  |  |  |  |
| F310 |  | Granallado y pintura anticorrosiva 2 manos | 10d | 2026-10-29 | 2026-11-12 | F300, F301, F302, F303, F305 | 4d | 0d | RECURSOS JVV [680 h] |
| F311 |  | Pintura esmalte color final RAL 7035 | 4d | 2026-11-12 | 2026-11-18 | F310 | 4d | 0d | RECURSOS JVV [340 h] |
|  | 5 | **Logística y Transporte** |  | 2026-11-02 | 2026-11-23 |  |  |  |  |
| F313 |  | Habilitación acceso maquinaria pesada a galpón | 3d | 2026-11-02 | 2026-11-04 | F208 | 17d | 0d | RECURSOS JVV [24 h] |
| F312 |  | Transporte de estructura a obra | 3d | 2026-11-18 | 2026-11-23 | F311 | 4d |  | RECURSOS JVV [16 h] |

| ID | WBS | Activity | Duration | Start | Finish | Predecessors | Total float | Free float | Resources |
| --- | --- | --- | --- | --- | --- | --- | --- | --- | --- |
|  | 6 | **Montaje Estructura Principal** |  | 2026-11-27 | 2026-12-25 |  |  |  |  |
| F314 |  | Montaje columnas principales | 5d | 2026-11-27 | 2026-12-03 | F218, F312, F313 | 0d |  | RECURSOS JVV [192 h] |
| F315 |  | Montaje vigas principales | 4d | 2026-12-04 | 2026-12-09 | F314 | 0d |  | RECURSOS JVV [96 h] |
| F316 |  | Montaje vigas secundarias | 4d | 2026-12-10 | 2026-12-15 | F315 | 0d |  | RECURSOS JVV [240 h] |
| F319 |  | Montaje tirantes y arriostramiento | 5d | 2026-12-10 | 2026-12-16 | F315 | 3d | 0d | RECURSOS JVV [100 h] |
| F317 |  | Montaje viguetas de cubierta | 4d | 2026-12-16 | 2026-12-21 | F316 | 0d |  | RECURSOS JVV [240 h] |
| F318 |  | Montaje correas de techo | 4d | 2026-12-22 | 2026-12-25 | F317, F304 | 0d |  | RECURSOS JVV [200 h] |
|  | 7 | **Montaje Portones y Accesos** |  | 2026-12-04 | 2026-12-09 |  |  |  |  |
| F320 |  | Montaje portones de acceso vehicular | 4d | 2026-12-04 | 2026-12-09 | F314, F306 | 61d | 13d | RECURSOS JVV [32 h] |
| F321 |  | Montaje puertas de emergencia | 4d | 2026-12-04 | 2026-12-09 | F314, F307 | 61d | 13d | RECURSOS JVV [24 h] |
|  | 8 | **Montaje Plataformas y Escaleras** |  | 2026-12-16 | 2026-12-21 |  |  |  |  |
| F322 |  | Montaje plataformas y escaleras | 4d | 2026-12-16 | 2026-12-21 | F316, F309, F308 | 12d | 5d | RECURSOS JVV [48 h] |
|  | 9 | **Cubierta y Cerramientos** |  | 2026-12-16 | 2027-01-06 |  |  |  |  |
| F324 |  | Cierre lateral panel metálico e=40mm | 4d | 2026-12-16 | 2026-12-22 | F319 | 3d | 0d | RECURSOS JVV [630 h] |
| F325 |  | Frente fachada con panel metálico | 5d | 2026-12-16 | 2026-12-23 | F319 | 6d | 0d | RECURSOS JVV [128 h] |
| F329 |  | Instalación rejillas de ventilación cenital | 4d | 2026-12-22 | 2026-12-28 | F324 | 3d | 1d | RECURSOS JVV [48 h] |
| F323 |  | Cubierta panel sandwich TR-5 e=50mm | 4d | 2026-12-28 | 2026-12-31 | F318, F319 | 0d |  | RECURSOS JVV [840 h] |
| F326 |  | Instalación canaletas y bajadas de aguas lluvia | 4d | 2026-12-31 | 2027-01-06 | F323 | 36d | 0d | RECURSOS JVV [48 h] |
| F327 |  | Instalación cumbreras y remates perimetrales | 4d | 2026-12-31 | 2027-01-06 | F323, F329, F333 | 41d | 0d | RECURSOS JVV [40 h] |
| F328 |  | Instalación claraboyas translúcidas | 4d | 2026-12-31 | 2027-01-06 | F323 | 41d | 0d | RECURSOS JVV [100 h] |
| F330 |  | Sellado de encuentros cubierta-muro | 4d | 2026-12-31 | 2027-01-06 | F323, F329 | 0d |  | RECURSOS JVV [60 h] |
|  | 10 | **Aislaciones** |  | 2026-12-22 | 2027-01-06 |  |  |  |  |
| F333 |  | Aislación muros laterales e=50mm | 4d | 2026-12-22 | 2026-12-28 | F324 | 44d | 3d | RECURSOS JVV [270 h] |
| F334 |  | Cierre inferior muro con placa fibrocemento | 4d | 2026-12-22 | 2026-12-28 | F324 | 48d | 7d | RECURSOS JVV [90 h] |
| F331 |  | Barrera de vapor bajo cubierta | 4d | 2026-12-28 | 2026-12-31 | F318 | 41d | 0d | RECURSOS JVV [210 h] |
| F332 |  | Aislación térmica cubierta lana mineral e=80mm | 4d | 2026-12-31 | 2027-01-06 | F323, F331 | 41d | 0d | RECURSOS JVV [420 h] |

| ID | WBS | Activity | Duration | Start | Finish | Predecessors | Total float | Free float | Resources |
| --- | --- | --- | --- | --- | --- | --- | --- | --- | --- |
|  | 11 | **Ventanas y Vanos** |  | 2026-12-22 | 2026-12-29 |  |  |  |  |
| F336 |  | Instalación ventanas laterales (0.6x0.8m) | 4d | 2026-12-22 | 2026-12-28 | F324 | 7d | 1d | RECURSOS JVV [40 h] |
| F335 |  | Instalación ventanas fachada (0.8x1.0m) | 4d | 2026-12-23 | 2026-12-29 | F325 | 6d | 0d | RECURSOS JVV [36 h] |
|  | 12 | **Pinturas y Terminaciones** |  | 2026-12-29 | 2027-01-15 |  |  |  |  |
| F337 |  | Pintura exterior de fachadas | 4d | 2026-12-29 | 2027-01-04 | F325, F335, F336, F329 | 6d | 0d | RECURSOS JVV [318 h] |
| F338 |  | Pintura interior galpón (vigas y columnas) | 4d | 2027-01-06 | 2027-01-12 | F330, F322 | 0d |  | RECURSOS JVV [144 h] |
| F339 |  | Limpieza post montaje estructura | 3d | 2027-01-12 | 2027-01-15 | F337, F338 | 0d |  | RECURSOS JVV [8 h] |
|  | 13 | **Control Calidad Estructura** |  | 2026-12-16 | 2026-12-25 |  |  |  |  |
| F340 |  | Apriete y revisión pernos de alta resistencia | 4d | 2026-12-16 | 2026-12-22 | F319 | 36d | 0d | RECURSOS JVV [48 h] |
| F341 |  | Inspección radiográfica soldaduras críticas | 4d | 2026-12-16 | 2026-12-22 | F319 | 36d | 0d | RECURSOS JVV [80 h] |
| F342 |  | Prueba de carga estructura (1.5x sobrecarga) | 3d | 2026-12-22 | 2026-12-25 | F340, F341 | 36d | 0d | RECURSOS JVV [24 h] |
| F343 |  | Control dimensional post montaje | 3d | 2026-12-22 | 2026-12-25 | F340 | 36d | 0d | RECURSOS JVV [16 h] |
|  | 14 | **Documentación As-Built** |  | 2026-12-28 | 2026-12-31 |  |  |  |  |
| F344 |  | Entrega de planos as-built estructura | 4d | 2026-12-28 | 2026-12-31 | F342, F343 | 36d |  | RECURSOS JVV [8 h] |
|  | 4 | **FASE 4: INSTALACIONES (EE + SS + CI + VENT)** |  | 2026-11-02 | 2027-02-02 |  |  |  |  |
|  | 1 | **Instalaciones Eléctricas - Tableros** |  | 2026-12-16 | 2026-12-29 |  |  |  |  |
| F400 |  | Tablero general BT 400A con protecciones | 5d | 2026-12-16 | 2026-12-22 | F226 | 7d | 0d | RECURSOS JVV [32 h] |
| F401 |  | Tablero de alumbrado y tomacorrientes | 5d | 2026-12-22 | 2026-12-29 | F400 | 7d | 0d | RECURSOS JVV [48 h] |
| F402 |  | Tablero de fuerza motores | 5d | 2026-12-22 | 2026-12-29 | F400 | 7d | 0d | RECURSOS JVV [24 h] |
|  | 2 | **Instalaciones Eléctricas - Canalizaciones** |  | 2026-12-04 | 2026-12-22 |  |  |  |  |
| F403 |  | Canalización conduit EMT 3" para circuito principal | 5d | 2026-12-04 | 2026-12-10 | F314 | 23d | 8d | RECURSOS JVV [40 h] |
| F404 |  | Canalización conduit EMT 1" alumbrado | 5d | 2026-12-10 | 2026-12-16 | F315 | 14d | 0d | RECURSOS JVV [120 h] |
| F405 |  | Canalización conduit EMT 1/2" tomacorrientes | 5d | 2026-12-16 | 2026-12-22 | F316 | 18d | 0d | RECURSOS JVV [60 h] |
|  | 3 | **Instalaciones Eléctricas - Cableado** |  | 2026-12-16 | 2027-01-08 |  |  |  |  |
| F408 |  | Cable XLPE 3x2.5mm² alumbrado | 5d | 2026-12-16 | 2026-12-23 | F404 | 14d | 6d | RECURSOS JVV [120 h] |
| F406 |  | Cable poder 4x16mm² (alimentador principal) | 5d | 2026-12-22 | 2026-12-29 | F403, F400 | 15d | 8d | RECURSOS JVV [30 h] |
| F407 |  | Cable XLPE 4x6mm² circuitos secundarios | 8d | 2026-12-29 | 2027-01-08 | F401, F400, F402 | 7d | 0d | RECURSOS JVV [120 h] |

| ID | WBS | Activity | Duration | Start | Finish | Predecessors | Total float | Free float | Resources |
| --- | --- | --- | --- | --- | --- | --- | --- | --- | --- |
|  | 4 | **Instalaciones Eléctricas - Iluminación** |  | 2026-12-31 | 2027-01-15 |  |  |  |  |
| F410 |  | Luminaria LED fluorescente 2x36W oficinas | 5d | 2026-12-31 | 2027-01-07 | F408, F416, F412 | 40d | 6d | RECURSOS JVV [12 h] |
| F409 |  | Luminaria LED industrial highbay 200W UFO | 5d | 2027-01-01 | 2027-01-08 | F408, F440 | 7d | 0d | RECURSOS JVV [80 h] |
| F411 |  | Luminaria exterior LED 150W con poste | 5d | 2027-01-08 | 2027-01-15 | F407 | 34d | 0d | RECURSOS JVV [18 h] |
|  | 5 | **Instalaciones Eléctricas - Accesorios** |  | 2026-12-22 | 2026-12-31 |  |  |  |  |
| F412 |  | Interruptores, tomacorrientes y accesorios | 7d | 2026-12-22 | 2026-12-31 | F405 | 40d | 0d | RECURSOS JVV [24 h] |
|  | 6 | **Instalaciones Eléctricas - Puesta a Tierra** |  | 2026-12-04 | 2026-12-17 |  |  |  |  |
| F413 |  | Sistema de puesta a tierra (red malla) | 7d | 2026-12-04 | 2026-12-15 | F314 | 23d | 0d | RECURSOS JVV [40 h] |
| F414 |  | Medición de resistencia de tierra (<5O) | 3d | 2026-12-15 | 2026-12-17 | F413 | 23d | 16d | RECURSOS JVV [4 h] |
|  | 7 | **Instalaciones Eléctricas - Respaldo** |  | 2026-11-04 | 2027-01-14 |  |  |  |  |
| F416 |  | Generador de emergencia 50KVA (arriendo) | 5d | 2026-11-04 | 2026-11-11 | F313 | 77d | 37d | RECURSOS JVV [8 h] |
| F415 |  | Sistema UPS oficina administración 3KVA | 4d | 2027-01-08 | 2027-01-14 | F407 | 35d | 1d | RECURSOS JVV [8 h] |
|  | 8 | **Instalaciones Eléctricas - Recepción SEC** |  | 2027-01-08 | 2027-01-15 |  |  |  |  |
| F417 |  | Revisión SEC y emisión informe | 5d | 2027-01-08 | 2027-01-15 | F406, F407, F408, F409, F414 | 7d | 0d | RECURSOS JVV [16 h] |
|  | 9 | **Instalaciones Sanitarias - Agua Potable** |  | 2026-11-02 | 2026-12-22 |  |  |  |  |
| F418 |  | Red AP enterrada PVC PN10 ø63mm | 5d | 2026-11-02 | 2026-11-06 | F208 | 45d | 0d | RECURSOS JVV [30 h] |
| F419 |  | Red AP interior PVC PN10 ø25mm | 5d | 2026-12-16 | 2026-12-22 | F226 | 52d | 30d | RECURSOS JVV [12 h] |
|  | 10 | **Instalaciones Sanitarias - Artefactos** |  | 2027-01-04 | 2027-01-11 |  |  |  |  |
| F420 |  | Artefactos sanitarios (WC+lavamanos+urinario) | 5d | 2027-01-04 | 2027-01-11 | F427 | 12d | 0d | RECURSOS JVV [32 h] |
| F421 |  | Instalación duchas SSHH personal | 5d | 2027-01-04 | 2027-01-11 | F427 | 12d | 0d | RECURSOS JVV [24 h] |
|  | 11 | **Instalaciones Sanitarias - Alcantarillado** |  | 2026-11-02 | 2026-12-29 |  |  |  |  |
| F423 |  | Red alcantarillado exterior PVC ø160mm | 5d | 2026-11-02 | 2026-11-06 | F208 | 62d | 0d | RECURSOS JVV [48 h] |
| F424 |  | Cámara de inspección aguas servidas | 4d | 2026-11-06 | 2026-11-12 | F423 | 62d | 55d | RECURSOS JVV [32 h] |
| F425 |  | Trampa de grasas | 4d | 2026-11-06 | 2026-11-12 | F423 | 62d | 55d | RECURSOS JVV [8 h] |
| F422 |  | Red alcantarillado interior PVC ø110mm | 7d | 2026-12-21 | 2026-12-29 | F436 | 21d | 9d | RECURSOS JVV [48 h] |

| ID | WBS | Activity | Duration | Start | Finish | Predecessors | Total float | Free float | Resources |
| --- | --- | --- | --- | --- | --- | --- | --- | --- | --- |
|  | 12 | **Instalaciones Sanitarias - Gas** |  | 2027-01-04 | 2027-01-08 |  |  |  |  |
| F426 |  | Instalación calefón 10L gas licuado | 4d | 2027-01-04 | 2027-01-08 | F427 | 13d | 1d | RECURSOS JVV [6 h] |
|  | 13 | **Construcción SSHH** |  | 2026-12-21 | 2027-01-04 |  |  |  |  |
| F427 |  | Construcción SSHH + caseta prefabricada 15m² | 11d | 2026-12-21 | 2027-01-04 | F436 | 5d | 0d | RECURSOS JVV [120 h] |
|  | 14 | **Protección Contra Incendios - Red Húmeda** |  | 2026-12-22 | 2027-01-08 |  |  |  |  |
| F428 |  | Red húmeda rociadores NFPA-13 ø63mm | 9d | 2026-12-22 | 2027-01-01 | F317 | 13d | 0d | RECURSOS JVV [320 h] |
| F429 |  | Rociadores automáticos estándar 68°C | 5d | 2027-01-01 | 2027-01-08 | F428 | 13d | 0d | RECURSOS JVV [80 h] |
|  | 15 | **Protección Contra Incendios - Detección** |  | 2026-12-22 | 2027-01-07 |  |  |  |  |
| F430 |  | Central de detección incendio 8 zonas | 4d | 2026-12-22 | 2026-12-28 | F405 | 18d | 0d | RECURSOS JVV [16 h] |
| F433 |  | Pulsadores manuales de alarma | 4d | 2026-12-28 | 2027-01-01 | F430 | 44d | 8d | RECURSOS JVV [3 h] |
| F434 |  | Sirenas estroboscópicas de alarma | 4d | 2026-12-28 | 2027-01-01 | F430 | 18d | 5d | RECURSOS JVV [3 h] |
| F431 |  | Detectores de humo fotoeléctricos | 4d | 2027-01-01 | 2027-01-07 | F430, F440 | 40d | 4d | RECURSOS JVV [20 h] |
| F432 |  | Detectores temperatura 58°C | 4d | 2027-01-01 | 2027-01-07 | F430, F440 | 40d | 4d | RECURSOS JVV [12 h] |
|  | 16 | **Protección Contra Incendios - Equipos** |  | 2026-11-06 | 2027-01-07 |  |  |  |  |
| F437 |  | Estanque de reserva agua CI 20m³ | 7d | 2026-11-06 | 2026-11-17 | F418 | 45d | 0d | RECURSOS JVV [24 h] |
| F438 |  | Grupo de presión CI motor-bomba 30HP | 7d | 2026-11-17 | 2026-11-26 | F437 | 45d | 32d | RECURSOS JVV [16 h] |
| F436 |  | Extintores PQS 12kg ABC | 3d | 2026-12-16 | 2026-12-21 | F226 | 5d | 0d | RECURSOS JVV [10 h] |
| F435 |  | Gabinetes contra incendio 1.5" completos | 4d | 2027-01-01 | 2027-01-07 | F428 | 14d | 1d | RECURSOS JVV [16 h] |
|  | 17 | **Protección Contra Incendios - Pruebas** |  | 2027-01-08 | 2027-01-13 |  |  |  |  |
| F439 |  | Prueba hidráulica red CI (1.5x presión trabajo) | 3d | 2027-01-08 | 2027-01-13 | F429, F435, F438, F434, F436 | 13d | 0d | RECURSOS JVV [8 h] |
|  | 18 | **Ventilación y Extracción** |  | 2026-12-22 | 2027-01-07 |  |  |  |  |
| F443 |  | Rejillas de admisión aire fresco fachada | 5d | 2026-12-22 | 2026-12-29 | F324 | 47d | 25d | RECURSOS JVV [12 h] |
| F440 |  | Extractor industrial axial 15.000m³/h | 5d | 2026-12-28 | 2027-01-01 | F318 | 7d | 0d | RECURSOS JVV [48 h] |
| F441 |  | Ventiladores de inyección 8.000m³/h | 5d | 2026-12-28 | 2027-01-01 | F318 | 17d | 0d | RECURSOS JVV [24 h] |
| F442 |  | Ductos metálicos galvanizados ventilación | 5d | 2026-12-28 | 2027-01-01 | F318 | 40d | 0d | RECURSOS JVV [120 h] |
| F444 |  | Control automático ventilación (termostato) | 4d | 2027-01-01 | 2027-01-07 | F441, F440 | 17d | 10d | RECURSOS JVV [8 h] |
| F445 |  | Sistema extracción gases batería carga montacarga | 4d | 2027-01-01 | 2027-01-07 | F442, F418 | 40d | 18d | RECURSOS JVV [16 h] |

| ID | WBS | Activity | Duration | Start | Finish | Predecessors | Total float | Free float | Resources |
| --- | --- | --- | --- | --- | --- | --- | --- | --- | --- |
|  | 19 | **Pruebas y Comisionamiento** |  | 2027-01-11 | 2027-01-21 |  |  |  |  |
| F447 |  | Pruebas y comisionamiento SSHH | 3d | 2027-01-11 | 2027-01-14 | F420, F421, F422, F426 | 12d | 5d | RECURSOS JVV [16 h] |
| F446 |  | Pruebas y comisionamiento instalaciones EE | 4d | 2027-01-15 | 2027-01-21 | F417 | 7d | 0d | RECURSOS JVV [24 h] |
|  | 20 | **Documentación As-Built** |  | 2027-01-21 | 2027-02-02 |  |  |  |  |
| F448 |  | Planos as-built instalaciones | 4d | 2027-01-21 | 2027-01-27 | F446, F447, F439, F444 | 7d | 0d | RECURSOS JVV [8 h] |
| F449 |  | Informe final de instalaciones y ensayos | 4d | 2027-01-27 | 2027-02-02 | F448, F424, F425 | 7d | 0d | RECURSOS JVV [8 h] |
|  | 5 | **FASE 5: EQUIPAMIENTO INTERIOR Y TERMINACIONES** |  | 2026-12-04 | 2027-02-18 |  |  |  |  |
|  | 1 | **Equipamiento de Almacenamiento** |  | 2027-01-28 | 2027-02-09 |  |  |  |  |
| F500 |  | Estantería metálica pesada 5 niveles 1000kg/niv | 5d | 2027-01-28 | 2027-02-03 | F241 | 0d |  | RECURSOS JVV [240 h] |
| F502 |  | Estantería para neumáticos y partes largas | 7d | 2027-01-28 | 2027-02-08 | F241 | 3d |  | RECURSOS JVV [40 h] |
| F501 |  | Estantería metálica mediana 3 niveles 500kg/niv | 5d | 2027-02-03 | 2027-02-09 | F241, F505, F507, F508, F515 | 1d |  | RECURSOS JVV [120 h] |
|  | 2 | **Mobiliario Industrial** |  | 2027-01-08 | 2027-02-03 |  |  |  |  |
| F504 |  | Casilleros personal (4 puertas) | 5d | 2027-01-08 | 2027-01-15 | F520 | 14d |  | RECURSOS JVV [8 h] |
| F503 |  | Mesones metálicos de trabajo 200x80cm | 5d | 2027-01-28 | 2027-02-03 | F241 | 5d |  | RECURSOS JVV [18 h] |
|  | 3 | **Señalética** |  | 2027-01-04 | 2027-02-10 |  |  |  |  |
| F507 |  | Señalética de emergencia y evacuación | 5d | 2027-01-04 | 2027-01-11 | F337 | 18d | 17d | RECURSOS JVV [6 h] |
| F505 |  | Señalética de seguridad vinilo reflectante | 5d | 2027-01-12 | 2027-01-19 | F337, F338 | 12d | 11d | RECURSOS JVV [18 h] |
| F508 |  | Pintura de señalética piso (vías tránsito) | 4d | 2027-01-28 | 2027-02-03 | F241 | 1d | 0d | RECURSOS JVV [45 h] |
| F506 |  | Señalética de almacenamiento y zonas | 5d | 2027-02-04 | 2027-02-10 | F500, F512, F514, F518, F504 | 0d |  | RECURSOS JVV [10 h] |
|  | 4 | **Sistemas de Seguridad y CCTV** |  | 2027-01-04 | 2027-01-28 |  |  |  |  |
| F510 |  | Cámaras CCTV exterior PTZ 4K | 5d | 2027-01-04 | 2027-01-11 | F337 | 10d | 6d | RECURSOS JVV [16 h] |
| F509 |  | Cámaras CCTV domo 4K interior | 5d | 2027-01-12 | 2027-01-19 | F338, F405 | 4d | 0d | RECURSOS JVV [24 h] |
| F511 |  | DVR 16 canales 4K + disco 8TB | 4d | 2027-01-19 | 2027-01-25 | F509, F510 | 4d | 0d | RECURSOS JVV [4 h] |
| F512 |  | Monitor 55" sala de control | 4d | 2027-01-25 | 2027-01-28 | F511 | 4d |  | RECURSOS JVV [2 h] |

| ID | WBS | Activity | Duration | Start | Finish | Predecessors | Total float | Free float | Resources |
| --- | --- | --- | --- | --- | --- | --- | --- | --- | --- |
|  | 5 | **Sistemas de Control de Acceso** |  | 2026-12-04 | 2027-01-04 |  |  |  |  |
| F515 |  | Barrera vehicular automática | 4d | 2026-12-04 | 2026-12-09 | F231 | 41d | 40d | RECURSOS JVV [12 h] |
| F513 |  | Sistema control de acceso biométrico | 5d | 2026-12-22 | 2026-12-29 | F405 | 23d | 0d | RECURSOS JVV [24 h] |
| F514 |  | Torniquete de acceso peatonal | 4d | 2026-12-29 | 2027-01-04 | F513 | 23d |  | RECURSOS JVV [8 h] |
|  | 6 | **Equipamiento de Oficina** |  | 2027-01-14 | 2027-01-28 |  |  |  |  |
| F516 |  | Mobiliario oficina bodegaje (escritorios+sillas) | 4d | 2027-01-14 | 2027-01-20 | F522 | 5d | 0d | RECURSOS JVV [8 h] |
| F517 |  | Computadores gestión bodega (3 equipos) | 3d | 2027-01-20 | 2027-01-25 | F516, F519 | 5d | 0d | RECURSOS JVV [10 h] |
| F518 |  | Impresora código de barras + lectores | 3d | 2027-01-25 | 2027-01-28 | F517 | 5d |  | RECURSOS JVV [6 h] |
|  | 7 | **Redes y Comunicaciones** |  | 2027-01-08 | 2027-01-14 |  |  |  |  |
| F519 |  | Instalación sistema WiFi industrial | 4d | 2027-01-08 | 2027-01-14 | F407 | 9d | 4d | RECURSOS JVV [12 h] |
|  | 8 | **Terminaciones SSHH y Oficinas** |  | 2027-01-04 | 2027-01-14 |  |  |  |  |
| F520 |  | Pintura interior muros SSHH | 4d | 2027-01-04 | 2027-01-08 | F427 | 5d | 0d | RECURSOS JVV [24 h] |
| F521 |  | Revestimiento cerámico SSHH | 4d | 2027-01-04 | 2027-01-08 | F427 | 5d | 0d | RECURSOS JVV [48 h] |
| F522 |  | Cielo falso planchas yeso-cartón oficinas | 4d | 2027-01-08 | 2027-01-14 | F520, F521 | 5d | 0d | RECURSOS JVV [45 h] |
|  | 9 | **Limpieza Final y Retiros** |  | 2027-02-10 | 2027-02-18 |  |  |  |  |
| F523 |  | Limpieza general de obra | 3d | 2027-02-10 | 2027-02-15 | F506, F449, F501, F502, F503 | 0d |  | RECURSOS JVV [24 h] |
| F524 |  | Retiro de instalaciones de faenas | 3d | 2027-02-16 | 2027-02-18 | F523 | 0d |  | RECURSOS JVV [16 h] |
|  | 6 | **FASE 6: GESTIÓN DE PROYECTO Y CIERRE** |  | 2026-09-07 | 2027-03-03 |  |  |  |  |
|  | 1 | **Dirección y Administración de Proyecto** |  | 2026-09-07 | 2027-03-02 |  |  |  |  |
| F600 |  | Dirección de proyecto (DP) — mensual | 130d | 2026-09-07 | 2027-03-02 | H00 SS | 1d | 0d | RECURSOS JVV [640 h] |
| F601 |  | Administración de contratos | 130d | 2026-09-07 | 2027-03-02 | H00 SS | 1d | 0d | RECURSOS JVV [320 h] |
|  | 2 | **Aseguramiento y Control de Calidad** |  | 2026-09-07 | 2027-03-02 |  |  |  |  |
| F602 |  | Gestión de calidad (inspecciones + libros) | 130d | 2026-09-07 | 2027-03-02 | H00 SS | 1d | 0d | RECURSOS JVV [320 h] |
|  | 3 | **Prevención de Riesgos** |  | 2026-09-07 | 2027-03-02 |  |  |  |  |
| F603 |  | Prevención de riesgos en obra | 130d | 2026-09-07 | 2027-03-02 | G01 | 1d | 0d | RECURSOS JVV [704 h] |

| ID | WBS | Activity | Duration | Start | Finish | Predecessors | Total float | Free float | Resources |
| --- | --- | --- | --- | --- | --- | --- | --- | --- | --- |
|  | 4 | **Reportabilidad y Coordinación** |  | 2026-09-07 | 2027-03-02 |  |  |  |  |
| F604 |  | Informes de avance mensuales al cliente | 130d | 2026-09-07 | 2027-03-02 | G01 | 1d | 0d | RECURSOS JVV [32 h] |
| F605 |  | Reuniones de coordinación semanal | 130d | 2026-09-07 | 2027-03-02 | G01 | 1d |  | RECURSOS JVV [51 h] |
|  | 5 | **Control de Costos** |  | 2026-09-07 | 2027-03-02 |  |  |  |  |
| F606 |  | Control de costos y EVM mensual | 130d | 2026-09-07 | 2027-03-02 | G01 | 1d |  | RECURSOS JVV [160 h] |
|  | 6 | **Recepción y Cierre** |  | 2027-02-18 | 2027-03-03 |  |  |  |  |
| F607 |  | Tramitación recepción definitiva DOM | 5d | 2027-02-18 | 2027-02-25 | F524, F449, F344 | 0d |  | RECURSOS JVV [16 h] |
| F608 |  | Entrega dossier técnico final | 3d | 2027-02-25 | 2027-03-02 | F607 | 0d |  | RECURSOS JVV [25 h] |
| F609 |  | Acta de entrega y recepción conforme | 1d | 2027-03-02 | 2027-03-03 | F608, F239, F242 | 0d |  | RECURSOS JVV [8 h] |
